| number | alias | title | done | effort | actualCompletion | progress | floatHours | criticalPath | remainingPlanningHours | milestone | forecastTarget | forecastStart | baselineStart | baselineTarget | variance | dependencies | workstream | actualStart | new |
| --- | --- | --- | --- | --- | --- | --- | --- | --- | --- | --- | --- | --- | --- | --- | --- | --- | --- | --- | --- |
| 108 | #108 | Patch the local integration image dependency advisory | True | 0 | 2026-09-08 | 100 | 1086.0 | Supporting | 0 |  |  |  |  |  |  |  |  |  |  |
| 106 | #106 | Patch the development test-runner security advisory | True | 0 | 2026-09-08 | 100 | 1086.0 | Supporting | 0 |  |  |  |  |  |  |  |  |  |  |
| 99 | #99 | Restore badges and distinguish target architecture from delivery status | True | 0 | 2026-09-08 | 100 | 1086.0 | Supporting | 0 | 5 | 2026-09-08 |  |  |  |  |  |  |  |  |
| 96 | #96 | Complete repository, architecture and privacy documentation | True | 0 | 2026-09-08 | 100 | 1086.0 | Supporting | 0 | 5 | 2026-09-08 | 2026-09-08 |  |  |  |  |  |  |  |
| 93 | #93 | Enforce private-beta resource guardrails | True | 8.0 | 2026-09-09 | 100 | 24.0 | Near-critical | 0 | 7 | 2026-09-09 | 2026-09-09 | 2026-10-27 | 2026-10-31 | -45 |  |  |  |  |
| 92 | #92 | Attach bounded telemetry to programmatic support intake |  | 16.0 |  | 0 | 966.0 | Supporting | 48.0 | 10 | 2027-05-07 | 2027-04-29 | 2027-03-08 | 2027-03-15 | 46 | 60, 91 | W2 |  |  |
| 91 | #91 | Recover accepted payloads through durable storage journals |  | 24.0 |  | 0 | 0.0 | Critical | 72.0 | 10 | 2026-09-23 | 2026-09-11 | 2026-10-15 | 2026-10-26 | -28 | 50, 59 | W1 |  |  |
| 90 | #90 | Expose owner and tenant Cost & Capacity controls |  | 24.0 |  | 0 | 336.0 | Supporting | 72.0 | 6 | 2027-04-26 | 2027-04-14 | 2027-01-09 | 2027-01-20 | 82 | 50, 64, 66 | W2 |  |  |
| 89 | #89 | Enable verified canonical support-email conversations |  | 24.0 |  | 0 | 696.0 | Supporting | 72.0 | 36 | 2027-04-13 | 2027-03-30 | 2027-01-25 | 2027-02-04 | 58 | 57, 87, 88 | W2 |  |  |
| 88 | #88 | Dispatch transactional outbound intents reliably |  | 24.0 |  | 0 | 0.0 | Critical | 72.0 | 10 | 2027-01-11 | 2026-12-30 | 2026-12-29 | 2027-01-08 | 2 | 63, 64, 87 | W2 |  |  |
| 87 | #87 | Normalise provider events into reliable conversation state |  | 32.0 |  | 0 | 0.0 | Critical | 96.0 | 9 | 2026-12-29 | 2026-12-14 | 2026-12-11 | 2026-12-28 | 1 | 51, 59, 91 | W2 |  |  |
| 86 | #86 | Expose authorised deterministic self-service actions |  | 24.0 |  | 0 | 702.0 | Supporting | 72.0 | 31 | 2027-05-18 | 2027-05-06 | 2027-06-08 | 2027-06-18 | -27 | 61, 81, 83 | W1 |  |  |
| 85 | #85 | Report operational performance and quality metrics |  | 16 |  | 0 | 384.0 | Supporting | 48 | 25 | 2027-11-04 | 2027-10-28 | 2027-07-06 | 2027-07-16 | 95 | 73, 84, 162 | W2 |  |  |
| 84 | #84 | Review agent interactions through auditable QA workflows |  | 24.0 |  | 0 | 384.0 | Supporting | 72.0 | 24 | 2027-10-27 | 2027-10-11 | 2027-06-24 | 2027-07-05 | 98 | 63, 82 | W2 |  |  |
| 83 | #83 | Transfer live agentic work safely to human operators |  | 24.0 |  | 0 | 384.0 | Supporting | 72.0 | 22 | 2027-05-05 | 2027-04-23 | 2027-05-27 | 2027-06-07 | -28 | 70, 80, 81 | W1 |  |  |
| 82 | #82 | Resolve reference-service tickets through bounded autonomous workflows |  | 32.0 |  | 0 | 384.0 | Supporting | 96.0 | 21 | 2027-10-09 | 2027-09-24 | 2027-06-08 | 2027-06-23 | 93 | 76, 80, 81, 83 | W2 |  |  |
| 81 | #81 | Bind human approvals to specific proposed actions |  | 24.0 |  | 0 | 384.0 | Supporting | 72.0 | 20 | 2027-04-22 | 2027-04-10 | 2027-05-15 | 2027-05-26 | -29 | 80 | W1 |  |  |
| 80 | #80 | Validate governed actions against an isolated reference API |  | 40.0 |  | 0 | 384.0 | Supporting | 120.0 | 20 | 2027-04-09 | 2027-03-20 | 2027-04-26 | 2027-05-14 | -30 | 63, 64, 79 | W1 |  |  |
| 79 | #79 | Enforce granular human and agent capabilities | True | 24.0 | 2026-09-10 | 100 | 432.0 | Supporting | 0 | 23 | 2027-04-21 | 2027-04-09 | 2027-04-09 | 2027-04-21 | -191 | 19, 63 |  | 2026-09-10 |  |
| 78 | #78 | Author and publish governed diagnostic workflows visually |  | 32.0 |  | 0 | 480.0 | Supporting | 96.0 | 27 | 2027-10-26 | 2027-10-11 | 2027-06-24 | 2027-07-09 | 93 | 66, 79, 80, 81, 82 | W1 |  |  |
| 77 | #77 | Expand the operator copilot with translation and runbooks |  | 16.0 |  | 0 | 576.0 | Supporting | 48.0 | 19 | 2027-09-23 | 2027-09-16 | 2027-05-19 | 2027-05-28 | 101 | 68, 76, 152 | W2 |  |  |
| 76 | #76 | Add bounded triage and conversation summarisation |  | 24.0 |  | 0 | 408.0 | Supporting | 72.0 | 18 | 2027-09-15 | 2027-09-02 | 2027-05-04 | 2027-05-18 | 103 | 75, 152 | W2 |  |  |
| 75 | #75 | Enrich intake with authorised operational context |  | 24.0 |  | 0 | 504.0 | Supporting | 72.0 | 17 | 2027-03-29 | 2027-03-17 | 2027-04-22 | 2027-05-03 | -30 | 64, 79 | W2 |  |  |
| 74 | #74 | Preserve conversations across verified channel changes |  | 24.0 |  | 0 | 0.0 | Critical | 72.0 | 30 | 2027-03-19 | 2027-03-06 | 2027-02-27 | 2027-03-10 | 8 | 53, 61, 87 | W1 |  |  |
| 73 | #73 | Expose SLA progress and responsible handlers | True | 0 | 2026-09-11 | 100 | 762.0 | Supporting | 0 | 29 | 2026-10-09 | 2026-09-26 | 2027-02-16 | 2027-02-26 | -144 | 61, 63, 136, 162 |  | 2026-09-11 |  |
| 72 | #72 | Split and merge tickets without losing context |  | 24.0 |  | 0 | 552.0 | Supporting | 72.0 | 15 | 2027-03-16 | 2027-03-04 | 2027-02-24 | 2027-03-06 | 8 | 59, 63, 70 | W2 |  |  |
| 71 | #71 | Enable keyboard-first workspace navigation |  | 12.0 |  | 0 | 750.0 | Supporting | 36.0 | 13 | 2026-11-03 | 2026-10-27 | 2027-02-05 | 2027-02-11 | -86 | 62, 66, 128 | W2 |  |  |
| 70 | #70 | Add typing awareness and private colleague collaboration |  | 24.0 |  | 0 | 480.0 | Supporting | 72.0 | 15 | 2026-10-19 | 2026-10-07 | 2027-02-11 | 2027-02-23 | -109 | 63, 68 | W1 |  |  |
| 69 | #69 | Add reusable responses and safe operator macros |  | 12.0 |  | 0 | 978.0 | Supporting | 36.0 | 14 | 2027-03-05 | 2027-02-24 | 2027-02-10 | 2027-02-15 | 16 | 68 | W1 |  |  |
| 68 | #68 | Add a rich conversation composer | True | 24.0 | 2026-09-11 | 100 | 480.0 | Supporting | 0 | 14 | 2026-10-06 | 2026-09-24 | 2027-01-29 | 2027-02-09 | -129 | 48, 66, 129 | W1 | 2026-09-11 |  |
| 67 | #67 | Package isolated helpdesk Web Components |  | 24.0 |  | 0 | 1014.0 | Supporting | 72.0 | 16 | 2027-03-03 | 2027-02-19 | 2027-01-01 | 2027-01-12 | 43 | 48, 66 | W2 |  |  |
| 66 | #66 | Apply tenant themes through standard CSS variables | True | 0 | 2026-09-11 | 100 | 312.0 | Supporting | 0 | 16 | 2026-09-18 | 2026-09-11 | 2026-12-24 | 2026-12-31 | -95 | 48 |  | 2026-09-11 |  |
| 65 | #65 | Rehearse and publish the human-led private beta | True | 16.0 | 2026-09-09 | 100 | 1038.0 | Supporting | 0 | 7 | 2026-09-09 | 2026-09-09 | 2026-11-13 | 2026-11-21 | -63 |  |  |  |  |
| 64 | #64 | Enforce resource budgets across active application paths |  | 16.0 |  | 0 | 24.0 | Near-critical | 48.0 | 6 | 2026-09-25 | 2026-09-16 | 2026-11-06 | 2026-11-16 | -44 | 50, 60, 93, 159 | W2 | 2026-09-11 |  |
| 63 | #63 | Record attributable ticket and conversation audit events | True | 16.0 | 2026-09-09 | 100 | 24.0 | Near-critical | 0 | 9 | 2026-09-09 | 2026-09-09 | 2026-10-23 | 2026-10-30 | -44 |  |  |  |  |
| 62 | #62 | Validate human handling of canonical ticket intake | True | 12.0 | 2026-09-09 | 100 | 312.0 | Supporting | 0 | 11 | 2026-09-09 | 2026-09-09 | 2026-11-02 | 2026-11-07 | -51 |  |  |  |  |
| 61 | #61 | Validate authenticated portal conversations end to end | True | 12.0 | 2026-09-09 | 100 | 384.0 | Supporting | 0 | 28 | 2026-09-15 | 2026-09-09 | 2026-10-31 | 2026-11-05 | -49 |  |  |  |  |
| 60 | #60 | Make API and portal mutations validated and retry-safe | True | 16.0 | 2026-09-09 | 100 | 24.0 | Near-critical | 0 | 10 | 2026-09-16 | 2026-09-09 | 2026-10-15 | 2026-10-22 | -37 |  |  |  |  |
| 59 | #59 | Map API and portal intake onto canonical conversation contracts | True | 16.0 | 2026-09-09 | 100 | 0.0 | Critical | 0 | 9 | 2026-09-15 | 2026-09-08 | 2026-10-07 | 2026-10-14 | -30 |  |  |  |  |
| 58 | #58 | Provision isolated test tenants reproducibly | True | 12.0 | 2026-09-08 | 100 | 1086.0 | Supporting | 0 | 9 | 2026-09-08 | 2026-09-08 | 2026-09-23 | 2026-09-28 | -17 |  |  |  |  |
| 57 | #57 | Establish isolated preview and beta deployments | True | 24.0 | 2026-09-08 | 100 | 1008.0 | Supporting | 0 | 7 | 2026-09-08 | 2026-09-08 | 2026-09-11 | 2026-09-22 | -12 |  |  |  |  |
| 56 | #56 | Implement tenant-owned Telegram support messaging |  | 16.0 |  | 0 | 720.0 | Supporting | 48.0 | 33 | 2027-02-23 | 2027-02-16 | 2027-04-01 | 2027-04-08 | -38 | 66, 87, 88 | W1 |  |  |
| 55 | #55 | Implement tenant-owned WhatsApp messaging |  | 24.0 |  | 0 | 696.0 | Supporting | 72.0 | 32 | 2027-02-18 | 2027-02-06 | 2027-03-19 | 2027-04-03 | -38 | 66, 87, 88 | W2 |  |  |
| 54 | #54 | Implement tenant-owned Microsoft Teams support channels |  | 32.0 |  | 0 | 672.0 | Supporting | 96.0 | 35 | 2027-02-15 | 2027-01-30 | 2027-03-16 | 2027-03-31 | -38 | 66, 87, 88 | W1 |  |  |
| 53 | #53 | Implement tenant-owned Slack support channels |  | 24.0 |  | 0 | 0.0 | Critical | 72.0 | 34 | 2027-02-05 | 2027-01-25 | 2027-01-13 | 2027-01-23 | 11 | 66, 87, 88 | W2 |  |  |
| 52 | #52 | Deliver signed tenant webhook subscriptions reliably |  | 16.0 |  | 0 | 720.0 | Supporting | 48.0 | 10 | 2027-01-29 | 2027-01-22 | 2027-03-11 | 2027-03-18 | -41 | 50, 64, 88 | W1 |  |  |
| 51 | #51 | Implement authenticated durable webhook ingress |  | 24.0 |  | 0 | 0.0 | Critical | 72.0 | 10 | 2026-12-12 | 2026-12-01 | 2026-11-16 | 2026-11-28 | 12 | 50, 64, 91 | W2 |  |  |
| 50 | #50 | Define enforceable cost policies and resource budgets | True | 16.0 | 2026-09-10 | 100 | 0.0 | Critical | 0 | 6 | 2026-09-15 | 2026-09-08 | 2026-09-08 | 2026-09-15 | -4 |  |  | 2026-09-10 |  |
| 49 | #49 | Track delivery of the omnichannel architecture |  | 2.0 |  | 0 | 624.0 | Supporting | 6.0 |  | 2027-04-28 | 2027-04-27 | 2027-04-09 | 2027-04-09 | 16 | 51, 52, 53, 54, 55, 56, 74, 89, 90 | W2 | 2026-09-08 |  |
| 48 | #48 | Establish shared headless primitives for standalone Tocyn | True | 40.0 | 2026-09-10 | 100 | 312.0 | Supporting | 0 | 16 | 2026-12-23 | 2026-12-03 | 2026-12-03 | 2026-12-23 | -89 | 127 |  | 2026-09-10 |  |
| 45 | #45 | Evaluate deferred major dependency and Actions upgrades |  | 8.0 |  | 0 | 1038.0 | Supporting | 24.0 | 5 | 2027-01-23 | 2027-01-20 | 2026-11-30 | 2026-12-02 | 45 | 12 | W2 |  |  |
| 44 | #44 | Retire inactive services while preserving regression coverage |  | 8.0 |  | 0 | 1038.0 | Supporting | 24.0 | 5 | 2027-01-19 | 2027-01-15 | 2026-11-26 | 2026-11-30 | 43 | 14 | W2 |  |  |
| 42 | #42 | Validate production cutover and rollback readiness |  | 16.0 |  | 0 | 1038.0 | Supporting | 48.0 | 8 | 2027-01-21 | 2027-01-14 | 2026-12-03 | 2026-12-10 | 36 | 65, 159, 160 | W1 |  |  |
| 22 | #22 | Complete remaining repository launch administration |  | 6.0 |  |  | 1068.0 | Supporting | 18.0 | 5 | 2027-01-14 | 2027-01-12 | 2026-12-01 | 2026-12-03 | 36 | 65 | W2 |  |  |
| 21 | #21 | Validate accessibility of core operator and portal workflows | True | 12.0 | 2026-09-09 | 100 | 1086.0 | Supporting | 0 | 13 | 2026-09-09 | 2026-09-09 | 2026-11-07 | 2026-11-13 | -56 |  |  |  |  |
| 20 | #20 | Verify reproducible local contributor setup | True | 8.0 | 2026-09-08 | 100 | 1086.0 | Supporting | 0 | 5 | 2026-09-10 | 2026-09-08 | 2026-09-08 | 2026-09-10 | -2 |  |  |  |  |
| 19 | #19 | Complete tenant-isolation acceptance coverage | True | 16.0 | 2026-09-08 | 100 | 432.0 | Supporting | 0 | 9 | 2026-09-15 | 2026-09-08 | 2026-09-29 | 2026-10-06 | -24 |  |  |  |  |
| 18 | #18 | Migrate transactional mail to Cloudflare-native delivery |  | 16.0 |  | 0 | 1038.0 | Supporting | 48.0 | 12 | 2027-01-13 | 2027-01-05 | 2027-01-21 | 2027-01-28 | -13 | 57 | W1 |  |  |
| 17 | #17 | Complete FidesLang coverage and optional user controls |  | 24.0 |  | 0 | 894.0 | Supporting | 72.0 | 26 | 2027-01-04 | 2026-12-23 | 2027-04-13 | 2027-04-24 | -95 | 16 | W1 |  |  |
| 16 | #16 | Establish measurable FidesLang coverage |  | 16.0 |  | 0 | 894.0 | Supporting | 48.0 | 26 | 2026-12-22 | 2026-12-15 | 2027-04-05 | 2027-04-12 | -95 | 59, 91 | W1 |  |  |
| 15 | #15 | Audit codebase health and test coverage | True | 0 | 2026-09-08 | 100 | 1086.0 | Supporting | 0 | 5 |  |  |  |  |  |  |  |  |  |
| 14 | #14 | Standardise repository formatting and lint conventions |  | 8.0 |  | 0 | 1038.0 | Supporting | 24.0 | 5 | 2026-12-14 | 2026-12-10 | 2026-11-21 | 2026-11-25 | 16 |  | W1 |  |  |
| 13 | #13 | Review and remediate codebase security vulnerabilities | True | 0 | 2026-09-08 | 100 | 1086.0 | Supporting | 0 | 23 |  |  |  |  |  |  |  |  |  |
| 12 | #12 | Verify required checks on dependency-only pull requests |  | 8.0 |  | 0 | 1038.0 | Supporting | 24.0 | 5 | 2026-09-15 | 2026-09-11 | 2026-09-16 | 2026-09-18 | -3 |  | W2 |  |  |
| 127 | NEW-UX-01 | Define the post-beta operator workspace interaction contract | True | 12 | 2026-09-10 | 100 | 312.0 | Supporting | 0 | 37 | 2026-09-19 | 2026-09-11 | 2026-09-11 | 2026-09-19 | -8 | 62 |  | 2026-09-10 | True |
| 128 | NEW-UX-02 | Build the persistent progressive operator workspace |  | 32 |  | 0 | 714.0 | Supporting | 96 | 13 | 2026-10-26 | 2026-10-10 | 2026-12-17 | 2027-01-02 | -59 | 127, 129, 130, 48, 66 | W2 |  | True |
| 129 | NEW-UX-03 | Persist operator drafts, selection and workspace continuity | True | 0 | 2026-09-11 | 100 | 480.0 | Supporting | 0 | 37 | 2026-09-22 | 2026-09-11 | 2026-10-02 | 2026-10-14 | -28 | 127, 60, 63, 79 | W2 | 2026-09-10 | True |
| 130 | NEW-UX-04 | Add task-based work queues and snooze/resurface |  | 24 |  | 0 | 714.0 | Supporting | 72 | 37 | 2026-10-09 | 2026-09-26 | 2026-12-04 | 2026-12-16 | -58 | 129, 136, 73, 64 | W2 |  | True |
| 131 | NEW-UX-05 | Unify global search and scoped inbox filtering |  | 12 |  | 0 | 750.0 | Supporting | 36 | 13 | 2026-11-11 | 2026-11-04 | 2027-01-14 | 2027-01-21 | -61 | 128, 71 | W2 |  | True |
| 132 | NEW-UX-06 | Add cognitive-accessibility workspace preferences and focus mode |  | 16 |  | 0 | 714.0 | Supporting | 48 | 13 | 2026-11-09 | 2026-11-02 | 2027-01-12 | 2027-01-19 | -61 | 128, 66 | W1 |  | True |

| number | alias | title | done | effort | actualCompletion | progress | floatHours | criticalPath | remainingPlanningHours | milestone | forecastTarget | forecastStart | baselineStart | baselineTarget | variance | dependencies | workstream | actualStart | new |
| --- | --- | --- | --- | --- | --- | --- | --- | --- | --- | --- | --- | --- | --- | --- | --- | --- | --- | --- | --- |
| 133 | NEW-UX-07 | Replace transient ticket toasts with durable operator activity |  | 16 |  | 0 | 774.0 | Supporting | 48 | 15 | 2026-11-17 | 2026-11-10 | 2027-01-20 | 2027-01-27 | -61 | 128, 63, 70, 66 | W1 |  | True |
| 134 | NEW-UX-08 | Add customer context and contextual support panels |  | 20 |  | 0 | 714.0 | Supporting | 60 | 13 | 2026-11-23 | 2026-11-12 | 2027-01-22 | 2027-02-02 | -61 | 128, 132, 63 | W2 |  | True |
| 135 | NEW-UX-09 | Add configurable Table view and safe bulk ticket actions |  | 16 |  | 0 | 774.0 | Supporting | 48 | 13 | 2026-11-25 | 2026-11-18 | 2027-01-28 | 2027-02-04 | -61 | 128, 60, 64, 79 | W1 |  | True |
| 136 | NEW-UX-10 | Add explicit waiting reasons and configurable support workflow states | True | 0 | 2026-09-11 | 100 | 762.0 | Supporting | 0 | 37 | 2026-09-23 | 2026-09-11 | 2026-10-15 | 2026-10-27 | -39 | 127, 60, 63, 79 |  | 2026-09-11 | True |
| 137 | NEW-UX-11 | Add workload-aware queues and operator capacity controls |  | 24 |  | 0 | 846.0 | Supporting | 72 | 29 | 2026-10-31 | 2026-10-20 | 2026-12-30 | 2027-01-11 | -61 | 73, 79, 162, 130 | W1 |  | True |
| 138 | NEW-UX-12 | Define workspace utility actions for call, remote support and external tools |  | 12 |  | 0 | 786.0 | Supporting | 36 | 13 | 2026-11-30 | 2026-11-24 | 2027-02-03 | 2027-02-09 | -61 | 128, 79 | W2 |  | True |
| 139 | NEW-UX-13 | Measure operator interaction performance and enforce UI response budgets |  | 8 |  | 0 | 798.0 | Supporting | 24 | 13 | 2026-12-01 | 2026-11-26 | 2027-02-05 | 2027-02-10 | -61 | 128, 48 | W1 |  | True |
| 140 | NEW-UX-14 | Validate the redesigned operator workspace for usability and cognitive accessibility |  | 16 |  | 0 | 714.0 | Supporting | 48 | 13 | 2026-12-09 | 2026-12-02 | 2027-02-11 | 2027-02-18 | -61 | 128, 129, 130, 131, 132, 133, 134, 135, 136, 137, 138, 139, 48, 66, 68, 70, 71, 73, 79 | W1 |  | True |
| 141 | PG-GOV-00 | Track delivery of the approved helpdesk capability extensions |  | 2 |  | 0 | 0.0 | Critical | 6 |  | 2027-12-09 | 2027-12-08 | 2028-02-08 | 2028-02-09 | -53 | 142, 143, 144, 145, 146, 147, 148, 149, 150, 151, 152, 153, 154, 155, 156, 157, 158 | W1 |  | True |
| 142 | PG-RT-01 | Prove the Cloudflare Realtime support-session architecture |  | 24 |  | 0 | 0.0 | Critical | 72 | 38 | 2027-05-21 | 2027-05-08 | 2027-07-09 | 2027-07-22 | -53 | 50, 74, 79, 87, 88, 90 | W2 |  | True |
| 143 | PG-RT-02 | Model tenant-scoped realtime support sessions and media permissions |  | 40 |  | 0 | 0.0 | Critical | 120 | 39 | 2027-06-11 | 2027-05-22 | 2027-07-23 | 2027-08-12 | -53 | 142, 50, 64, 74, 79 | W2 |  | True |
| 144 | PG-RT-03 | Add browser voice, video and screen-sharing support sessions |  | 48 |  | 0 | 120.0 | Supporting | 144 | 39 | 2027-07-06 | 2027-06-12 | 2027-08-13 | 2027-09-06 | -53 | 143, 48, 68, 70, 74 | W2 |  | True |
| 145 | PG-RT-04 | Implement a tenant-owned telephony gateway for inbound and outbound calls |  | 48 |  | 0 | 0.0 | Critical | 144 | 40 | 2027-07-19 | 2027-06-25 | 2027-08-26 | 2027-09-18 | -53 | 142, 143, 74, 79, 87, 88, 90 | W1 |  | True |
| 146 | PG-RT-05 | Add voicemail, callback, transfer and call-queue operations |  | 40 |  | 0 | 0.0 | Critical | 120 | 40 | 2027-08-09 | 2027-07-20 | 2027-09-20 | 2027-10-09 | -53 | 145, 70, 73, 79 | W1 |  | True |
| 147 | PG-RT-06 | Record and transcribe support sessions under tenant policy |  | 40 |  | 0 | 144.0 | Supporting | 120 | 41 | 2027-07-27 | 2027-07-07 | 2027-09-07 | 2027-09-27 | -53 | 143, 50, 90 | W2 |  | True |
| 148 | PG-RT-07 | Integrate realtime support artefacts into conversations, QA and reporting |  | 24 |  | 0 | 0.0 | Critical | 72 | 41 | 2027-11-17 | 2027-11-05 | 2028-01-06 | 2028-01-18 | -53 | 144, 146, 147, 76, 77, 84, 85 | W2 |  | True |
| 149 | PG-TK-01 | Create linked back-office work items without exposing customer conversations |  | 32 |  | 0 | 552.0 | Supporting | 96 | 42 | 2027-06-03 | 2027-05-19 | 2027-07-20 | 2027-08-04 | -53 | 70, 72, 79 | W1 |  | True |
| 150 | PG-TK-02 | Track service problems and incidents across affected conversations |  | 40 |  | 0 | 552.0 | Supporting | 120 | 42 | 2027-06-24 | 2027-06-04 | 2027-08-05 | 2027-08-25 | -53 | 149, 72, 79, 88 | W1 |  | True |
| 151 | PG-KB-01 | Ingest tenant PDF knowledge with lifecycle-safe provenance |  | 32 |  | 0 | 408.0 | Supporting | 96 | 43 | 2027-08-13 | 2027-07-28 | 2027-09-28 | 2027-10-14 | -53 | 50, 64, 79 | W2 |  | True |
| 152 | PG-KB-02 | Bind AI assistance to authorised tenant knowledge scopes |  | 24 |  | 0 | 408.0 | Supporting | 72 | 43 | 2027-09-01 | 2027-08-14 | 2027-10-15 | 2027-11-02 | -53 | 151, 79 | W2 |  | True |
| 153 | PG-AP-01 | Render governed operator applets from declarative schemas |  | 40 |  | 0 | 624.0 | Supporting | 120 | 44 | 2027-08-30 | 2027-08-10 | 2027-10-11 | 2027-10-30 | -53 | 48, 68, 75, 79, 80, 81 | W1 |  | True |
| 154 | PG-AP-02 | Author, validate and publish tenant applets safely |  | 32 |  | 0 | 480.0 | Supporting | 96 | 44 | 2027-11-11 | 2027-10-27 | 2027-12-28 | 2028-01-12 | -53 | 153, 66, 78, 79, 80, 81 | W1 |  | True |
| 155 | PG-FB-01 | Capture tenant-scoped CSAT and CES feedback |  | 24 |  | 0 | 576.0 | Supporting | 72 | 45 | 2027-09-11 | 2027-08-31 | 2027-11-01 | 2027-11-12 | -53 | 73, 79, 88 | W1 |  | True |
| 156 | PG-RP-01 | Expose a live support-operations management dashboard |  | 32 |  | 0 | 0.0 | Critical | 96 | 45 | 2027-12-07 | 2027-11-18 | 2028-01-19 | 2028-02-07 | -53 | 73, 85, 155, 150, 148 | W2 |  | True |
| 157 | PG-RP-02 | Build bounded tenant-defined operational reports |  | 40 |  | 0 | 432.0 | Supporting | 120 | 45 | 2027-12-02 | 2027-11-12 | 2028-01-13 | 2028-02-02 | -53 | 50, 79, 85, 155 | W1 |  | True |
| 158 | PG-ID-01 | Accept verified Cloudflare Access workforce identity without weakening Tocyn authorisation |  | 32 |  | 0 | 984.0 | Supporting | 96 | 46 | 2027-09-28 | 2027-09-13 | 2027-11-13 | 2027-11-29 | -53 | 79 | W1 |  | True |
| 159 | OBS | Establish operational observability and service-level objectives | True | 0 | 2026-09-11 | 100 | 24.0 | Near-critical | 0 | 8 |  |  | 2026-10-28 | 2026-11-09 | -50 | 50, 63 |  | 2026-09-10 | True |
| 160 | RES | Define deployment residency and jurisdiction boundaries | True | 12 | 2026-09-10 | 100 | 1038.0 | Supporting | 0 | 8 |  |  | 2027-02-19 | 2027-02-25 | -144 | 19 |  | 2026-09-10 | True |
| 161 | AIG | Evaluate AI inference routing, caching and provider fallback |  | 8 |  | 0 | 774.0 | Supporting | 24 | 17 | 2027-10-02 | 2027-09-29 | 2027-11-30 | 2027-12-03 | -53 | 50, 64, 76 | W1 |  | True |
| 162 | METRICS-FOUNDATION | Define operational metric contracts for SLA and routing | True | 0 | 2026-09-11 | 100 | 762.0 | Supporting | 0 | 25 | 2026-10-19 | 2026-10-15 | 2026-11-14 | 2026-11-18 | -58 | 63, 79 | W1 | 2026-09-11 | True |
